# Bouwplanning v1.0

Schedule from an IFC model, 2027-03-01 to 2027-12-01.
Villa Nieuwbouw Wassenaar

## Schedule

| ID | Activity | Type | Duration | Start | Finish | Predecessors | Planned start | Planned finish | Total float | Free float |
| --- | --- | --- | --- | --- | --- | --- | --- | --- | --- | --- |
| 1 | **1. Voorbereiding** |  | 5d | 2027-03-01 | 2027-03-08 |  | 2027-03-01 | 2027-03-05 | 0d |  |
| 1.1 | Bouwplaats inrichten |  | 3d | 2027-03-01 | 2027-03-03 |  |  |  | 0d |  |
| 1.2 | Bomen beschermen |  | 2d | 2027-03-04 | 2027-03-05 | 1.1 | 2027-03-01 | 2027-03-02 | 171d | 0d |
| 1.3 | Start bouw | milestone | 0d | 2027-03-08 | 2027-03-08 | 1.2 | 2027-03-01 | 2027-03-01 | 171d |  |
| 2 | **2. Grondwerk & Fundering** |  | 5d | 2027-03-04 | 2027-04-22 |  | 2027-03-01 | 2027-03-05 | 0d |  |
| 2.1 | Ontgraven zwembad |  | 8d | 2027-03-04 | 2027-03-15 | 1.1 SS+3d | 2027-03-01 | 2027-03-10 | 0d |  |
| 2.2 | Funderingssleuven graven |  | 5d | 2027-03-16 | 2027-03-22 | 2.1 | 2027-03-01 | 2027-03-05 | 140d | 0d |
| 2.3 | Fundering storten |  | 8d | 2027-03-23 | 2027-04-05 | 2.2 | 2027-03-01 | 2027-03-10 | 140d | 0d |
| 2.4 | Riolering en drainage |  | 5d | 2027-04-06 | 2027-04-12 | 2.3 | 2027-03-01 | 2027-03-05 | 140d | 0d |
| 2.5 | Kruipruimte opvullen |  | 3d | 2027-04-13 | 2027-04-15 | 2.4 | 2027-03-01 | 2027-03-03 | 140d | 0d |
| 2.6 | Begane grondvloer |  | 5d | 2027-04-16 | 2027-04-22 | 2.5 | 2027-03-01 | 2027-03-05 | 140d |  |
| 3 | **3. Ruwbouw** |  | 5d | 2027-03-09 | 2027-05-18 |  | 2027-03-01 | 2027-03-05 | 0d |  |
| 3.1 | Begane grond metselwerk |  | 12d | 2027-03-09 | 2027-03-24 | 2.1 SS | 2027-03-01 | 2027-03-16 | 0d |  |
| 3.2 | Verdiepingsvloer storten |  | 5d | 2027-03-25 | 2027-04-02 | 3.1 | 2027-03-01 | 2027-03-05 | 0d |  |
| 3.3 | Verdieping metselwerk |  | 10d | 2027-04-05 | 2027-04-16 | 3.2 | 2027-03-01 | 2027-03-12 | 0d |  |
| 3.4 | Dakconstructie hout |  | 10d | 2027-04-19 | 2027-05-03 | 3.3 | 2027-03-01 | 2027-03-12 | 0d |  |
| 3.5 | Dakpannen |  | 5d | 2027-05-04 | 2027-05-12 | 3.4 | 2027-03-01 | 2027-03-05 | 0d |  |
| 3.6 | Schoorstenen metsen |  | 3d | 2027-05-13 | 2027-05-18 | 3.5 | 2027-03-01 | 2027-03-03 | 0d |  |
| 3.7 | Hoogste punt | milestone | 0d | 2027-05-18 | 2027-05-18 | 3.6 | 2027-03-01 | 2027-03-01 | 126d |  |
| 4 | **4. Gevel & Dak** |  | 5d | 2027-05-03 | 2027-06-10 |  | 2027-03-01 | 2027-03-05 | 0d |  |
| 4.1 | Gevelisolatie |  | 8d | 2027-05-03 | 2027-05-14 | 3.6 FS-9d | 2027-03-01 | 2027-03-10 | 0d |  |
| 4.2 | Kozijnen hardhouten |  | 8d | 2027-05-18 | 2027-05-27 | 4.1 | 2027-03-01 | 2027-03-10 | 0d |  |
| 4.3 | Beglazing HR+++ |  | 5d | 2027-05-28 | 2027-06-03 | 4.2 | 2027-03-01 | 2027-03-05 | 0d |  |
| 4.4 | Zinken goten en HWA |  | 5d | 2027-06-04 | 2027-06-10 | 4.3, 3.6 FF+2d | 2027-03-01 | 2027-03-05 | 0d |  |
| 4.5 | Wind- en waterdicht | milestone | 0d | 2027-06-10 | 2027-06-10 | 4.4 | 2027-03-01 | 2027-03-01 | 109d |  |

| ID | Activity | Type | Duration | Start | Finish | Predecessors | Planned start | Planned finish | Total float | Free float |
| --- | --- | --- | --- | --- | --- | --- | --- | --- | --- | --- |
| 5 | **5. Installaties** |  | 5d | 2027-06-11 | 2027-09-01 |  | 2027-03-01 | 2027-03-05 | 0d |  |
| 5.1 | Elektra eerste fix |  | 8d | 2027-06-11 | 2027-06-22 | 4.4 | 2027-03-01 | 2027-03-10 | 0d |  |
| 5.2 | Loodgieter eerste fix |  | 8d | 2027-06-15 | 2027-06-24 | 5.1 SS+2d | 2027-03-01 | 2027-03-10 | 65d | 0d |
| 5.3 | Vloerverwarming |  | 8d | 2027-06-25 | 2027-07-06 | 5.2 | 2027-03-01 | 2027-03-10 | 65d | 0d |
| 5.4 | Domotica systeem |  | 5d | 2027-07-07 | 2027-07-13 | 5.3 | 2027-03-01 | 2027-03-05 | 65d | 0d |
| 5.5 | Zwembadtechniek |  | 10d | 2027-07-14 | 2027-08-17 | 5.4 | 2027-03-01 | 2027-03-12 | 65d | 0d |
| 5.6 | Warmtepomp en bodem |  | 8d | 2027-08-18 | 2027-08-27 | 5.5 | 2027-03-01 | 2027-03-10 | 65d | 0d |
| 5.7 | Zonnepanelen |  | 3d | 2027-08-30 | 2027-09-01 | 5.6 | 2027-03-01 | 2027-03-03 | 65d |  |
| 6 | **6. Afbouw** |  | 5d | 2027-07-16 | 2027-10-26 |  | 2027-03-01 | 2027-03-05 | 0d |  |
| 6.1 | Stucwerk wanden en plafonds |  | 12d | 2027-07-16 | 2027-08-23 | 5.1 SS+25d | 2027-03-01 | 2027-03-16 | 0d |  |
| 6.2 | Tegelwerk badkamers luxe |  | 10d | 2027-08-24 | 2027-09-06 | 6.1 | 2027-03-01 | 2027-03-12 | 0d |  |
| 6.3 | Natuurstenen vloeren |  | 8d | 2027-09-07 | 2027-09-16 | 6.2 | 2027-03-01 | 2027-03-10 | 0d |  |
| 6.4 | Eiken trappen |  | 5d | 2027-09-17 | 2027-09-23 | 6.3 | 2027-03-01 | 2027-03-05 | 0d |  |
| 6.5 | Maatwerk keuken |  | 8d | 2027-09-24 | 2027-10-05 | 6.4 | 2027-03-01 | 2027-03-10 | 0d |  |
| 6.6 | Schilderwerk |  | 10d | 2027-10-06 | 2027-10-19 | 6.5 | 2027-03-01 | 2027-03-12 | 0d |  |
| 6.7 | Sanitair afmonteren |  | 5d | 2027-10-20 | 2027-10-26 | 6.6 | 2027-03-01 | 2027-03-05 | 0d |  |
| 7 | **7. Buitenwerk & Oplevering** |  | 5d | 2027-10-27 | 2027-12-01 |  | 2027-03-01 | 2027-03-05 | 0d |  |
| 7.1 | Zwembad afbouwen |  | 8d | 2027-10-27 | 2027-11-05 | 6.7 | 2027-03-01 | 2027-03-10 | 0d |  |
| 7.2 | Tuinaanleg |  | 10d | 2027-11-08 | 2027-11-19 | 7.1 | 2027-03-01 | 2027-03-12 | 0d |  |
| 7.3 | Oprit en bestrating |  | 5d | 2027-11-22 | 2027-11-26 | 7.2 | 2027-03-01 | 2027-03-05 | 0d |  |
| 7.4 | Schoonmaak |  | 3d | 2027-11-29 | 2027-12-01 | 7.3 | 2027-03-01 | 2027-03-03 | 0d |  |
| 7.5 | Oplevering | milestone | 0d | 2027-12-01 | 2027-12-01 | 7.4 | 2027-03-01 | 2027-03-01 | 0d |  |
