# Bouwplanning v1.0

Schedule from an IFC model.
Datacentrum Agriport A7

## Schedule

| ID | Activity | Predecessors |
| --- | --- | --- |
| 1 | **1. Voorbereiding** |  |
| 1.1 | Terrein bouwrijp maken |  |
| 1.2 | Nutsaansluitingen 10kV | 1.1 |
| 1.3 | Security hekwerk tijdelijk | 1.2 |
| 1.4 | Start bouw | 1.3 |
| 2 | **2. Fundering** |  |
| 2.1 | Heien funderingspalen | 1.4 |
| 2.2 | Funderingsbalken | 2.1 |
| 2.3 | Vloer op palen storten | 2.2 |
| 2.4 | Kabelgoten in vloer | 2.3 |
| 3 | **3. Constructie** |  |
| 3.1 | Prefab betonwanden | 2.4 |
| 3.2 | Staalconstructie dak | 3.1 |
| 3.3 | Dakpanelen sandwich | 3.2 |
| 3.4 | Verhoogde computervloer | 3.3 |
| 3.5 | Hoogste punt | 3.4 |
| 4 | **4. Gevel & Waterdicht** |  |
| 4.1 | Gevelisolatie en beplating | 3.5 |
| 4.2 | Laadperrons en deuren | 4.1 |
| 4.3 | Waterdichting dak | 4.2 |
| 4.4 | Wind- en waterdicht | 4.3 |
| 5 | **5. Elektra & Koeling** |  |
| 5.1 | Transformatoren 10kV | 4.4 |
| 5.2 | UPS systemen | 5.1 |
| 5.3 | Noodstroomgeneratoren | 5.2 |
| 5.4 | Hoofdverdeling en PDU | 5.3 |
| 5.5 | Koelmachines | 5.4 |
| 5.6 | CRAH units datahallen | 5.5 |
| 5.7 | Koeltorens buiten | 5.6 |

| ID | Activity | Predecessors |
| --- | --- | --- |
| 6 | **6. ICT & Beveiliging** |  |
| 6.1 | Glasvezel inkomend | 5.7 |
| 6.2 | Patchpanelen en bekabeling | 6.1 |
| 6.3 | Brandblussysteem gas | 6.2 |
| 6.4 | Toegangscontrole biometrisch | 6.3 |
| 6.5 | CCTV systeem | 6.4 |
| 6.6 | BMS monitoring | 6.5 |
| 7 | **7. Oplevering** |  |
| 7.1 | Testen failover scenario | 6.6 |
| 7.2 | Terreinafwerking | 7.1 |
| 7.3 | Certificering Tier III | 7.2 |
| 7.4 | Oplevering | 7.3 |
