# Bouwplanning v1.0

Schedule from an IFC model, 2027-03-01 to 2027-08-17, A marks actual dates.
Nieuwbouw 6 Rijwoningen De Akkers

## Schedule

| ID | Activity | Type | Duration | Start | Finish | Predecessors | Complete | Planned start | Planned finish | Total float | Free float | Resources |
| --- | --- | --- | --- | --- | --- | --- | --- | --- | --- | --- | --- | --- |
| 1 | Start bouw | milestone | 0d | 2027-03-01 A | 2027-03-01 A |  | 100% |  |  | 0d |  |  |
| 2 | **1. Terreininrichting** |  | 5d | 2027-03-01 | 2027-03-12 |  |  | 2027-03-01 | 2027-03-05 | 0d |  |  |
| 2.1 | Bouwbord & veiligheidshek plaatsen |  | 1d | 2027-03-01 A | 2027-03-02 A | 1 | 100% | 2027-03-01 | 2027-03-01 | 0d |  |  |
| 2.2 | Bouwweg aanleggen |  | 3d | 2027-03-02 A | 2027-03-05 A | 2.1 | 100% | 2027-03-01 | 2027-03-03 | 0d |  |  |
| 2.3 | Bouwketen plaatsen |  | 2d | 2027-03-05 A | 2027-03-09 A | 2.2 | 100% | 2027-03-01 | 2027-03-02 | 0d |  |  |
| 2.4 | Nutsaansluitingen aanleggen |  | 3d | 2027-03-09 A | 2027-03-12 A | 2.3 | 100% | 2027-03-01 | 2027-03-03 | 0d |  |  |
| 3 | **2. Fundering (gedeeld)** |  | 5d | 2027-03-12 | 2027-04-07 |  |  | 2027-03-01 | 2027-03-05 | 0d |  |  |
| 3.1 | Grondwerk bouwput |  | 5d | 2027-03-12 A | 2027-03-19 A | 2.4 | 100% | 2027-03-01 | 2027-03-05 | 0d |  |  |
| 3.2 | Funderingsbalken storten |  | 5d | 2027-03-19 A | 2027-03-29 A | 3.1 | 100% | 2027-03-01 | 2027-03-05 | 0d | 2d | Beton C20/25 |
| 3.3 | Begane grondvloer storten |  | 4d | 2027-04-01 A | 2027-04-07 A | 3.2 FS+3d | 100% | 2027-03-01 | 2027-03-04 | 0d |  | Beton C20/25 |
| 3.4 | Inspectie fundering | milestone | 0d | 2027-04-07 A | 2027-04-07 A | 3.3 | 100% | 2027-03-01 | 2027-03-01 | 0d |  |  |
| 4 | **3. Ruwbouw per woning** |  | 5d | 2027-04-07 | 2027-06-25 |  |  | 2027-03-01 | 2027-03-05 | 0d |  |  |
| 4.1 | Metselwerk begane grond â Woning 1 |  | 6d | 2027-04-07 A | 2027-04-15 A | 3.4 | 100% | 2027-03-01 | 2027-03-08 | 0d |  | Metselaars |
| 4.2 | Verdiepingsvloer â Woning 1 |  | 4d | 2027-04-15 A | 2027-04-21 A | 4.1 | 100% | 2027-03-01 | 2027-03-04 | 25d | 0d |  |
| 4.3 | Metselwerk verdieping â Woning 1 |  | 6d | 2027-04-21 A | 2027-04-29 A | 4.2 | 100% | 2027-03-01 | 2027-03-08 | 26d | 0d | Metselaars |
| 4.4 | Kapconstructie â Woning 1 |  | 5d | 2027-04-29 A | 2027-05-06 A | 4.3 | 100% | 2027-03-01 | 2027-03-05 | 28d | 8d | Timmerlieden |
| 4.5 | Metselwerk begane grond â Woning 2 |  | 6d | 2027-04-15 A | 2027-04-23 A | 4.1 | 100% | 2027-03-01 | 2027-03-08 | 0d |  | Metselaars |
| 4.6 | Verdiepingsvloer â Woning 2 |  | 4d | 2027-04-23 A | 2027-04-29 A | 4.5 | 100% | 2027-03-01 | 2027-03-04 | 19d | 0d |  |
| 4.7 | Metselwerk verdieping â Woning 2 |  | 6d | 2027-04-29 A | 2027-05-07 A | 4.6 | 100% | 2027-03-01 | 2027-03-08 | 21d | 0d | Metselaars |
| 4.8 | Kapconstructie â Woning 2 |  | 5d | 2027-05-07 A | 2027-05-14 A | 4.7 | 100% | 2027-03-01 | 2027-03-05 | 21d | 2d | Timmerlieden |
| 4.9 | Metselwerk begane grond â Woning 3 |  | 6d | 2027-04-23 A | 2027-05-03 A | 4.5 | 100% | 2027-03-01 | 2027-03-08 | 0d |  | Metselaars |
| 4.10 | Verdiepingsvloer â Woning 3 |  | 4d | 2027-05-03 A | 2027-05-07 A | 4.9 | 100% | 2027-03-01 | 2027-03-04 | 15d | 0d |  |
| 4.11 | Metselwerk verdieping â Woning 3 |  | 6d | 2027-05-07 A | 2027-05-17 A | 4.10 | 100% | 2027-03-01 | 2027-03-08 | 16d | 0d | Metselaars |
| 4.12 | Kapconstructie â Woning 3 |  | 5d | 2027-05-17 A | 2027-05-20 A | 4.11 | 100% | 2027-03-01 | 2027-03-05 | 18d | 0d | Timmerlieden |
| 4.13 | Metselwerk begane grond â Woning 4 |  | 6d | 2027-05-03 A | 2027-05-11 A | 4.9 | 100% | 2027-03-01 | 2027-03-08 | 0d |  | Metselaars |
| 4.14 | Verdiepingsvloer â Woning 4 |  | 4d | 2027-05-11 A | 2027-05-21 | 4.13 | 50% | 2027-03-01 | 2027-03-04 | 6d | 0d |  |
| 4.15 | Metselwerk verdieping â Woning 4 |  | 6d | 2027-05-24 | 2027-05-31 | 4.14 |  | 2027-03-01 | 2027-03-08 | 6d | 0d | Metselaars |
| 4.16 | Kapconstructie â Woning 4 |  | 5d | 2027-06-01 | 2027-06-07 | 4.15 |  | 2027-03-01 | 2027-03-05 | 6d | 0d | Timmerlieden |
| 4.17 | Metselwerk begane grond â Woning 5 |  | 6d | 2027-05-20 | 2027-05-27 | 4.13 |  | 2027-03-01 | 2027-03-08 | 0d |  | Metselaars |
| 4.18 | Verdiepingsvloer â Woning 5 |  | 4d | 2027-05-28 | 2027-06-02 | 4.17 |  | 2027-03-01 | 2027-03-04 | 0d |  |  |
| 4.19 | Metselwerk verdieping â Woning 5 |  | 6d | 2027-06-03 | 2027-06-10 | 4.18 |  | 2027-03-01 | 2027-03-08 | 0d |  | Metselaars |
| 4.20 | Kapconstructie â Woning 5 |  | 5d | 2027-06-11 | 2027-06-17 | 4.19 |  | 2027-03-01 | 2027-03-05 | 0d |  | Timmerlieden |
| 4.21 | Metselwerk begane grond â Woning 6 |  | 6d | 2027-05-28 | 2027-06-04 | 4.17 |  | 2027-03-01 | 2027-03-08 | 0d |  | Metselaars |
| 4.22 | Verdiepingsvloer â Woning 6 |  | 4d | 2027-06-07 | 2027-06-10 | 4.21 |  | 2027-03-01 | 2027-03-04 | 0d |  |  |
| 4.23 | Metselwerk verdieping â Woning 6 |  | 6d | 2027-06-11 | 2027-06-18 | 4.22 |  | 2027-03-01 | 2027-03-08 | 0d |  | Metselaars |
| 4.24 | Kapconstructie â Woning 6 |  | 5d | 2027-06-21 | 2027-06-25 | 4.23 |  | 2027-03-01 | 2027-03-05 | 0d |  | Timmerlieden |
| 4.25 | Hoogste punt bereikt | milestone | 0d | 2027-06-25 | 2027-06-25 | 4.4, 4.8, 4.12, 4.16, 4.20, 4.24 |  | 2027-03-01 | 2027-03-01 | 22d |  |  |

Notes:
- 2.4: Vastgepind (prioriteit 1000): de aansluitdatum ligt vast bij het nutsbedrijf en mag niet schuiven.

| ID | Activity | Duration | Start | Finish | Predecessors | Planned start | Planned finish | Total float | Free float | Resources |
| --- | --- | --- | --- | --- | --- | --- | --- | --- | --- | --- |
| 5 | **4. Installaties** | 5d | 2027-05-20 | 2027-07-06 |  | 2027-03-01 | 2027-03-05 | 0d |  |  |
| 5.1 | Loodgieterswerk â Woning 1 | 3d | 2027-05-20 | 2027-05-24 | 4.4 | 2027-03-01 | 2027-03-03 | 20d | 0d | Installateurs |
| 5.2 | Elektra â Woning 1 | 3d | 2027-05-25 | 2027-05-27 | 5.1 | 2027-03-01 | 2027-03-03 | 20d | 0d | Installateurs |
| 5.3 | Opleverkeuring installaties â Woning 1 | 1d | 2027-05-27 | 2027-05-27 | 5.2 FS-1d | 2027-03-01 | 2027-03-01 | 20d | 0d |  |
| 5.4 | Loodgieterswerk â Woning 2 | 3d | 2027-05-20 | 2027-05-24 | 4.8 | 2027-03-01 | 2027-03-03 | 19d | 0d | Installateurs |
| 5.5 | Elektra â Woning 2 | 3d | 2027-05-25 | 2027-05-27 | 5.4 | 2027-03-01 | 2027-03-03 | 19d | 0d | Installateurs |
| 5.6 | Opleverkeuring installaties â Woning 2 | 1d | 2027-05-28 | 2027-05-28 | 5.5 | 2027-03-01 | 2027-03-01 | 19d | 0d |  |
| 5.7 | Loodgieterswerk â Woning 3 | 3d | 2027-05-21 | 2027-05-25 | 4.12 | 2027-03-01 | 2027-03-03 | 18d | 0d | Installateurs |
| 5.8 | Elektra â Woning 3 | 3d | 2027-05-26 | 2027-05-28 | 5.7 | 2027-03-01 | 2027-03-03 | 18d | 0d | Installateurs |
| 5.9 | Opleverkeuring installaties â Woning 3 | 1d | 2027-05-31 | 2027-05-31 | 5.8 | 2027-03-01 | 2027-03-01 | 18d | 0d |  |
| 5.10 | Loodgieterswerk â Woning 4 | 3d | 2027-06-08 | 2027-06-10 | 4.16 | 2027-03-01 | 2027-03-03 | 6d | 0d | Installateurs |
| 5.11 | Elektra â Woning 4 | 3d | 2027-06-11 | 2027-06-15 | 5.10 | 2027-03-01 | 2027-03-03 | 6d | 0d | Installateurs |
| 5.12 | Opleverkeuring installaties â Woning 4 | 1d | 2027-06-16 | 2027-06-16 | 5.11 | 2027-03-01 | 2027-03-01 | 6d | 0d |  |
| 5.13 | Loodgieterswerk â Woning 5 | 3d | 2027-06-18 | 2027-06-22 | 4.20 | 2027-03-01 | 2027-03-03 | 0d |  | Installateurs |
| 5.14 | Elektra â Woning 5 | 3d | 2027-06-23 | 2027-06-25 | 5.13 | 2027-03-01 | 2027-03-03 | 0d |  | Installateurs |
| 5.15 | Opleverkeuring installaties â Woning 5 | 1d | 2027-06-28 | 2027-06-28 | 5.14 | 2027-03-01 | 2027-03-01 | 0d |  |  |
| 5.16 | Loodgieterswerk â Woning 6 | 3d | 2027-06-28 | 2027-06-30 | 4.24 | 2027-03-01 | 2027-03-03 | 0d |  | Installateurs |
| 5.17 | Elektra â Woning 6 | 3d | 2027-07-01 | 2027-07-05 | 5.16 | 2027-03-01 | 2027-03-03 | 0d |  | Installateurs |
| 5.18 | Opleverkeuring installaties â Woning 6 | 1d | 2027-07-06 | 2027-07-06 | 5.17 | 2027-03-01 | 2027-03-01 | 0d |  |  |
| 6 | **5. Afbouw** | 5d | 2027-05-28 | 2027-08-17 |  | 2027-03-01 | 2027-03-05 | 0d |  |  |
| 6.1 | Stucwerk â Woning 1 | 5d | 2027-05-28 | 2027-06-03 | 5.3 | 2027-03-01 | 2027-03-05 | 20d | 0d | Stukadoors |
| 6.2 | Tegelwerk â Woning 1 | 3d | 2027-06-04 | 2027-06-08 | 6.1 | 2027-03-01 | 2027-03-03 | 22d | 0d |  |
| 6.3 | Sanitair plaatsen â Woning 1 | 3d | 2027-06-09 | 2027-06-11 | 6.2 | 2027-03-01 | 2027-03-03 | 22d | 0d |  |
| 6.4 | Schilderwerk â Woning 1 | 4d | 2027-06-10 | 2027-06-15 | 6.3 SS | 2027-03-01 | 2027-03-04 | 22d | 0d | Schilders |
| 6.5 | Stucwerk â Woning 2 | 5d | 2027-05-31 | 2027-06-04 | 5.6, 6.1 SS | 2027-03-01 | 2027-03-05 | 19d | 0d | Stukadoors |
| 6.6 | Tegelwerk â Woning 2 | 3d | 2027-06-07 | 2027-06-09 | 6.5 | 2027-03-01 | 2027-03-03 | 19d | 0d |  |
| 6.7 | Sanitair plaatsen â Woning 2 | 3d | 2027-06-10 | 2027-06-14 | 6.6 | 2027-03-01 | 2027-03-03 | 19d | 0d |  |
| 6.8 | Schilderwerk â Woning 2 | 4d | 2027-06-15 | 2027-06-18 | 6.7 | 2027-03-01 | 2027-03-04 | 19d | 0d | Schilders |
| 6.9 | Stucwerk â Woning 3 | 5d | 2027-06-01 | 2027-06-07 | 5.9 | 2027-03-01 | 2027-03-05 | 18d | 0d | Stukadoors |
| 6.10 | Tegelwerk â Woning 3 | 3d | 2027-06-08 | 2027-06-10 | 6.9 | 2027-03-01 | 2027-03-03 | 18d | 0d |  |
| 6.11 | Sanitair plaatsen â Woning 3 | 3d | 2027-06-11 | 2027-06-15 | 6.10 | 2027-03-01 | 2027-03-03 | 18d | 0d |  |
| 6.12 | Schilderwerk â Woning 3 | 4d | 2027-06-16 | 2027-06-21 | 6.11 | 2027-03-01 | 2027-03-04 | 18d | 0d | Schilders |
| 6.13 | Stucwerk â Woning 4 | 5d | 2027-06-17 | 2027-06-23 | 5.12 | 2027-03-01 | 2027-03-05 | 6d | 0d | Stukadoors |
| 6.14 | Tegelwerk â Woning 4 | 3d | 2027-06-24 | 2027-06-28 | 6.13 | 2027-03-01 | 2027-03-03 | 6d | 0d |  |
| 6.15 | Sanitair plaatsen â Woning 4 | 3d | 2027-06-29 | 2027-07-01 | 6.14 | 2027-03-01 | 2027-03-03 | 6d | 0d |  |
| 6.16 | Schilderwerk â Woning 4 | 4d | 2027-07-02 | 2027-07-07 | 6.15 | 2027-03-01 | 2027-03-04 | 6d | 0d | Schilders |
| 6.17 | Stucwerk â Woning 5 | 5d | 2027-06-29 | 2027-07-05 | 5.15 | 2027-03-01 | 2027-03-05 | 0d |  | Stukadoors |
| 6.18 | Tegelwerk â Woning 5 | 3d | 2027-07-06 | 2027-07-08 | 6.17 | 2027-03-01 | 2027-03-03 | 0d |  |  |
| 6.19 | Sanitair plaatsen â Woning 5 | 3d | 2027-07-09 | 2027-07-13 | 6.18 | 2027-03-01 | 2027-03-03 | 0d |  |  |
| 6.20 | Schilderwerk â Woning 5 | 4d | 2027-07-14 | 2027-07-19 | 6.19 | 2027-03-01 | 2027-03-04 | 0d |  | Schilders |
| 6.21 | Stucwerk â Woning 6 | 5d | 2027-07-07 | 2027-07-13 | 5.18 | 2027-03-01 | 2027-03-05 | 0d |  | Stukadoors |
| 6.22 | Tegelwerk â Woning 6 | 3d | 2027-07-14 | 2027-07-16 | 6.21 | 2027-03-01 | 2027-03-03 | 0d |  |  |
| 6.23 | Sanitair plaatsen â Woning 6 | 3d | 2027-07-19 | 2027-07-21 | 6.22 | 2027-03-01 | 2027-03-03 | 0d |  |  |
| 6.24 | Schilderwerk â Woning 6 | 4d | 2027-07-22 | 2027-08-17 | 6.23 | 2027-03-01 | 2027-03-04 | 0d |  | Schilders |

| ID | Activity | Type | Duration | Start | Finish | Predecessors | Planned start | Planned finish | Total float | Free float |
| --- | --- | --- | --- | --- | --- | --- | --- | --- | --- | --- |
| 7 | **6. Oplevering** |  | 5d | 2027-06-15 | 2027-08-17 |  | 2027-03-01 | 2027-03-05 | 0d |  |
| 7.1 | Opleverinspectie â Woning 1 | milestone | 0d | 2027-06-15 | 2027-06-15 | 6.4, 6.3 | 2027-03-01 | 2027-03-01 | 22d | 30d |
| 7.2 | Opleverinspectie â Woning 2 | milestone | 0d | 2027-06-18 | 2027-06-18 | 6.8, 6.7 | 2027-03-01 | 2027-03-01 | 19d | 27d |
| 7.3 | Opleverinspectie â Woning 3 | milestone | 0d | 2027-06-21 | 2027-06-21 | 6.12, 6.11 | 2027-03-01 | 2027-03-01 | 18d | 26d |
| 7.4 | Opleverinspectie â Woning 4 | milestone | 0d | 2027-07-07 | 2027-07-07 | 6.16, 6.15 | 2027-03-01 | 2027-03-01 | 6d | 14d |
| 7.5 | Opleverinspectie â Woning 5 | milestone | 0d | 2027-07-19 | 2027-07-19 | 6.20, 6.19 | 2027-03-01 | 2027-03-01 | 0d | 6d |
| 7.6 | Opleverinspectie â Woning 6 | milestone | 0d | 2027-08-17 | 2027-08-17 | 6.24, 6.23 | 2027-03-01 | 2027-03-01 | 0d |  |
| 7.7 | Contractuele oplevering project | milestone | 0d | 2027-08-17 | 2027-08-17 | 7.1, 7.2, 7.3, 7.4, 7.5, 7.6 | 2027-03-01 | 2027-03-01 | 0d |  |

Notes:
- 7.7: Contractuele einddatum met de opdrachtgever; de deadline ligt bewust vÃ³Ã³r de vroegst haalbare datum (negatieve float).
